# MPP_Template

How a schedule from MS Project changed from version to version. A marks actual dates.

## Version 1 (saved 2012-10-24, file CSP_Schedule_Plan_V1.1.mpp)

| ID | WBS | Task | Duration | Start | Finish | Predecessors | Complete | Total float | Constraint |
| --- | --- | --- | --- | --- | --- | --- | --- | --- | --- |
| 1 |  | CSP-Consumable_Spare_Parts_Material_Control System | 106d | 2012-07-03 | 2012-11-27 |  |  | 4.5d | finish no earlier than 2012-11-27 |
| 2 | 2 | **Engineering Activities** | 49d | 2012-07-03 | 2012-09-07 |  |  | 126.67d |  |
| 3 | 2.1 | **Project Initiation** | 49d | 2012-07-03 | 2012-09-07 |  |  | 126.67d |  |
| 4 | 2.1.1 | **Define Scope** | 5d | 2012-07-03 | 2012-07-09 |  |  | 170.67d |  |
| 5 |  | Define project Scope | 5d | 2012-07-03 | 2012-07-09 |  |  | 101d | start no earlier than 2012-07-03 |
| 6 |  | Develop Work Breakdown Structure | 5d | 2012-07-03 | 2012-07-09 |  |  | 101d | start no earlier than 2012-07-03 |
| 7 | 2.1.2 | **Preparation** | 49d | 2012-07-03 | 2012-09-07 |  |  | 126.67d |  |
| 8 |  | Set Up Project Management Tools | 2d | 2012-07-03 | 2012-07-04 |  |  | 173.67d | start no earlier than 2012-07-03 |
| 9 |  | Set Up Project develop Tools | 10d | 2012-08-27 | 2012-09-07 |  |  | 126.67d | start no earlier than 2012-08-27 |
| 10 | 2.2 | **Project Kickoff** | 98d? | 2012-09-06 A | 2013-01-21 |  | 4% | 0d |  |
| 11 |  | Project Kickoff Meeting | 0.5d | 2012-09-06 | 2012-09-06 |  |  | 2d | start no earlier than 2012-09-06 |
| 13 | 2.3 | **CSP New Modules** | 97.5d? | 2012-09-06 A | 2013-01-21 | 11 | 4% | 0d |  |
| 14 | 2.3.1 | **Requirements, System and Acceptance Test Planning** | 57.5d? | 2012-09-06 A | 2012-11-26 |  | 3% | 0.73d |  |
| 15 | 2.3.1.1 | **Requirements Engineering** | 57.5d? | 2012-09-06 A | 2012-11-26 |  | 3% | 0.73d |  |
| 16 | 2.3.1.1.1 | **Define Requirements & prepare SRS** | 57.5d? | 2012-09-06 A | 2012-11-26 |  | 3% | 0.73d |  |
| 17 | 3.2.1.1.1.1 | **基本資料 查詢(BASIC)** | 2d? | 2012-09-06 | 2012-09-10 |  |  | 21.5d |  |
| 18 |  | 員工資料 | 1d? | 2012-09-06 | 2012-09-07 |  |  | 21.5d |  |
| 19 |  | 供應商資料 | 1d? | 2012-09-07 | 2012-09-10 | 18 |  | 21.5d |  |
| 20 |  | Review & Rework SRS | 2d | 2012-09-10 A | 2012-09-12 A | 19 | 100% |  | start no earlier than 2012-07-06 |
| 21 | 3.2.1.1.1.3 | **料號主檔 查詢(ITEMLIST)** | 31.5d | 2012-09-10 | 2012-10-23 | 17 |  | 0d |  |
| 22 |  | 料號 主檔 | 25d | 2012-09-10 | 2012-10-15 |  |  | 5.5d |  |
| 23 |  | 料號 總覽 | 3d | 2012-10-16 | 2012-10-18 |  |  | 0d | start no earlier than 2012-10-16 |
| 24 |  | 部門內控管料號 | 1d | 2012-10-19 | 2012-10-19 | 23 |  | 0d |  |
| 25 |  | 料號與替代料號對應總覽 | 1d | 2012-10-22 | 2012-10-22 | 24 |  | 0d |  |
| 26 |  | Review & Rework SRS | 1d | 2012-10-23 | 2012-10-23 | 25 |  | 0d | start no earlier than 2012-07-06 |
| 28 | 3.2.1.1.1.4 | **系統登錄(LOGIN)&主頁(MP)** | 2d | 2012-10-24 | 2012-10-25 | 21 |  | 0d |  |
| 29 |  | Review & Rework SRS | 2d | 2012-10-24 | 2012-10-25 |  |  | 0d | start no earlier than 2012-07-06 |
| 30 | 3.2.1.1.1.5 | **系統維護(SYS)** | 2d | 2012-10-26 | 2012-10-29 | 28 |  | 0d |  |
| 31 |  | Review & Rework SRS | 2d | 2012-10-26 | 2012-10-29 |  |  | 0d | start no earlier than 2012-07-06 |
| 32 | 3.2.1.1.1.6 | **歷史查詢(HIS)** | 2d | 2012-10-30 | 2012-10-31 | 30 |  | 0d |  |
| 33 |  | Review & Rework SRS | 2d | 2012-10-30 | 2012-10-31 |  |  | 0d | start no earlier than 2012-07-06 |
| 34 | 3.2.1.1.1.7 | **申請作業(APPL)** | 15d | 2012-11-01 | 2012-11-21 | 32 |  | 0d |  |
| 35 |  | 料號新增/規格異動 | 10d | 2012-11-01 | 2012-11-14 |  |  | 0d |  |
| 36 |  | 94階 料號 庫存異動 | 5d | 2012-11-15 | 2012-11-21 | 35 |  | 0d |  |
| 37 |  | 94階 保養需求 | 5d | 2012-11-15 | 2012-11-21 | 35 |  | 0d |  |
| 38 |  | Review & Rework SRS | 5d | 2012-11-01 | 2012-11-07 |  |  | 10d | start no earlier than 2012-07-06 |
| 39 | 3.2.1.1.1.8 | **審核作業(REV)** | 2d | 2012-11-22 | 2012-11-23 | 34 |  | 0d |  |
| 40 |  | Review & Rework SRS | 2d | 2012-11-22 | 2012-11-23 |  |  | 0d | start no earlier than 2012-07-06 |
| 41 | 3.2.1.1.1.9 | **查詢/重訂購- 控管量(ROP)** | 1d | 2012-11-26 | 2012-11-26 | 39 |  | 0.73d |  |
| 42 |  | Review & Rework SRS | 1d | 2012-11-26 | 2012-11-26 |  |  | 0.73d | finish no earlier than 2008-08-21 |
| 43 | 2.3.4 | **Coding & Unit Test** | 93.5d | 2012-09-12 A | 2013-01-21 |  | 4% | 0d |  |
| 44 | 3.2.2.1 | **Coding & Unit Test - Module 基本資料查詢** | 17d | 2012-09-12 A | 2012-10-05 |  | 86% | 96.17d |  |
| 45 |  | Coding & Unit Test of Module 基本資料查詢 | 5d | 2012-09-12 A | 2012-09-19 A | 20 | 100% |  | start no earlier than 2004-03-31 |
| 46 |  | Code Review of Module 基本資料查詢 | 1d | 2012-09-26 A | 2012-09-27 A | 96 | 100% |  | start no earlier than 2004-03-31 |
| 47 |  | Review & Rework & Verify on Module 基本資料查詢 | 1d | 2012-10-04 | 2012-10-05 | 97 |  | 96.17d | finish no earlier than 2008-09-27 |
| 48 | 3.2.2.2 | **Coding & Unit Test - Module 料號主檔 查詢** | 27d | 2012-10-15 | 2012-11-21 |  |  | 55.77d |  |
| 49 | 3.2.2.2.1 | **Coding & Unit Test of Module 料號主檔/總覽 查詢** | 15d | 2012-10-15 | 2012-11-05 |  |  | 55.77d |  |
| 50 |  | 料號 主檔 | 15d | 2012-10-15 | 2012-11-05 | 22 |  | 55.77d |  |
| 51 |  | 料號 總覽 | 5d | 2012-10-19 | 2012-10-25 | 23 |  | 57.27d |  |
| 52 |  | 部門內控管料號 | 5d | 2012-10-22 | 2012-10-26 | 24 |  | 68.67d |  |
| 53 |  | 料號與替代料號對應總覽 | 5d | 2012-10-26 | 2012-11-01 | 51 |  | 57.27d |  |
| 54 |  | Code Review of Module 料號主檔/總覽 查詢 | 2d | 2012-11-12 | 2012-11-14 | 99 |  | 55.77d | start no earlier than 2004-03-31 |
| 55 |  | Review & Rework & Verify on Module 料號主檔/總覽 查詢 | 2d | 2012-11-19 | 2012-11-21 | 100 |  | 55.77d | start no earlier than 2004-03-31 |
| 56 | 2.3.4.1 | **Coding & Unit - Module 系統登錄 + 首頁** | 14d | 2012-10-26 | 2012-11-14 |  |  | 48d |  |
| 57 |  | Coding & Unit Test of Module 系統登錄 + 首頁 | 5d | 2012-10-26 | 2012-11-01 | 29 |  | 48d | start no earlier than 2004-03-31 |
| 58 |  | Code Review of Module 系統登錄 + 首頁 | 1d | 2012-11-09 | 2012-11-09 | 102 |  | 48d | start no earlier than 2004-03-31 |
| 59 |  | Review & Rework & Verify on Module 系統登錄 + 首頁 | 1d | 2012-11-14 | 2012-11-14 | 103 |  | 48d | start no earlier than 2004-03-31 |
| 60 | 2.3.4.7 | **Coding & Unit Test - Module 系統維護** | 37d | 2012-10-30 | 2012-12-19 |  |  | 23d |  |
| 61 |  | Coding & Unit Test of Module 系統維護 | 22d | 2012-10-30 | 2012-11-28 | 31 |  | 23d | start no earlier than 2004-03-31 |
| 62 |  | Code Review of Module 系統維護 | 1d | 2012-12-13 | 2012-12-13 | 105 |  | 23d | start no earlier than 2004-03-31 |
| 63 |  | Review & Rework & Verify on Module 系統維護 | 2d | 2012-12-18 | 2012-12-19 | 106 |  | 23d | finish no earlier than 2008-09-27 |
| 64 | 3.2.2.5 | **Coding & Unit Test - Module 歷史查詢** | 34d | 2012-11-01 | 2012-12-18 |  |  | 24d |  |
| 65 |  | Coding & Unit Test of Module 歷史查詢 | 15d | 2012-11-01 | 2012-11-21 | 33 |  | 24d | start no earlier than 2004-03-31 |
| 66 |  | Code Review of Module 歷史查詢 | 1d | 2012-12-13 | 2012-12-13 | 108 |  | 24d |  |
| 67 |  | Review & Rework & Verify on Module 歷史查詢 | 1d | 2012-12-18 | 2012-12-18 | 109 |  | 24d | start no earlier than 2004-03-31 |
| 68 | 2.3.4.3 | **Coding & Unit Test - Module 申請作業** | 43d | 2012-11-08 | 2013-01-07 |  |  | 10d |  |
| 69 |  | Coding & Unit Test of Module 申請作業 | 22d | 2012-11-08 | 2012-12-07 | 38 |  | 10d | start no earlier than 2004-03-31 |
| 70 |  | Code Review of Module 申請作業 | 2d | 2012-12-31 | 2013-01-01 | 111 |  | 10d |  |
| 71 |  | Review & Rework & Verify on Module 申請作業 | 2d | 2013-01-04 | 2013-01-07 | 112 |  | 10d | start no earlier than 2004-03-31 |
| 72 | 2.3.4.5 | **Coding & Unit Test - Module 審核作業** | 41d | 2012-11-26 | 2013-01-21 |  |  | 0d |  |

| ID | WBS | Task | Duration | Start | Finish | Predecessors | Complete | Total float | Constraint |
| --- | --- | --- | --- | --- | --- | --- | --- | --- | --- |
| 73 |  | Coding & Unit Test of Module 審核作業 | 22d | 2012-11-26 | 2012-12-25 | 40 |  | 0d | start no earlier than 2004-03-31 |
| 74 |  | Code Review of Module 審核作業 | 1d | 2013-01-16 | 2013-01-16 | 114 |  | 0d | start no earlier than 2004-03-31 |
| 75 |  | Review & Rework & Verify on Module 審核作業 | 1d | 2013-01-21 | 2013-01-21 | 115 |  | 0d | start no earlier than 2004-03-31 |
| 76 | 3.2.2.8 | **Coding & Unit Test - Module 查詢/重訂購- 控管量** | 29d | 2012-11-27 | 2013-01-04 |  |  | 0.73d |  |
| 77 |  | Coding & Unit Test of Module查詢/重訂購- 控管量 | 10d | 2012-11-27 | 2012-12-10 | 42 |  | 0.73d | start no earlier than 2004-03-31 |
| 78 |  | Code Review of Module 查詢/重訂購- 控管量 | 1d | 2013-01-01 | 2013-01-01 | 117 |  | 0.73d | start no earlier than 2004-03-31 |
| 79 |  | Review & Rework & Verify on Module 查詢/重訂購- 控管量 | 1d | 2013-01-04 | 2013-01-04 | 118 |  | 0.73d | start no earlier than 2004-03-31 |
| 81 | 2.5 | **System test** | 8.67d | 2013-01-07 | 2013-01-17 |  |  | 0.73d |  |
| 82 | 2.5 | **Integration Test** | 5.33d | 2013-01-07 | 2013-01-14 | 76 |  | 0.73d |  |
| 83 |  | Establish Integration Test Environment | 1.5d | 2013-01-07 | 2013-01-08 |  |  | 4.57d | start no earlier than 2008-10-08 |
| 84 |  | Integration testing of various modules & Document Test Results | 4d | 2013-01-07 | 2013-01-10 |  |  | 0.73d | start no earlier than 2008-10-08 |
| 85 |  | Rework & Verification related to Integration Testing | 1.33d | 2013-01-11 | 2013-01-14 | 84 |  | 0.73d | start no earlier than 2008-10-08 |
| 86 | 2.5.3 | **Performance Test** | 3.33d | 2013-01-14 | 2013-01-17 | 82 |  | 0.73d |  |
| 87 |  | Establish System Test Environment | 1.2d | 2013-01-14 | 2013-01-15 |  |  | 2.87d | start no earlier than 2008-10-08 |
| 88 |  | Conduct System Testing & Document Test Results | 2d | 2013-01-14 | 2013-01-16 |  |  | 0.73d | start no earlier than 2004-03-31 |
| 89 |  | Rework & Verification related to System Testing | 1.33d | 2013-01-16 | 2013-01-17 | 88 |  | 0.73d | start no earlier than 2004-03-31 |
| 90 | 2.6 | **Release** | 1.6d | 2013-01-17 | 2013-01-21 | 86 |  | 0.73d |  |
| 91 |  | Preparation of Release note | 1d | 2013-01-17 | 2013-01-18 |  |  | 1.33d | start no earlier than 2004-03-31 |
| 92 |  | Release program units | 1.6d | 2013-01-17 | 2013-01-21 |  |  | 0.73d | start no earlier than 2008-10-16 |
| 93 | 2.7 | **Acceptance Test** | 87.5d | 2012-09-19 A | 2013-01-18 |  | 5% | 1d |  |
| 94 | 2.3.4 | **Provide onsite support to the Acceptance Testing** | 87.5d | 2012-09-19 A | 2013-01-18 |  | 5% | 0d |  |
| 95 | 3.5.1.1 | **Unit Test - Module 基本資料查詢** | 11d | 2012-09-19 A | 2012-10-04 |  | 50% | 96.17d |  |
| 96 |  | Unit Test of Module 基本資料查詢 | 5d | 2012-09-19 A | 2012-09-26 A | 45 | 100% |  | start no earlier than 2004-03-31 |
| 97 |  | Review & Verify on Module 基本資料查詢 | 5d | 2012-09-27 | 2012-10-04 | 46 |  | 96.17d | finish no earlier than 2008-09-27 |
| 98 | 3.5.1.2 | **Unit Test - Module 料號主檔 查詢** | 10d | 2012-11-05 | 2012-11-19 |  |  | 55.77d |  |
| 99 |  | Unit Test of Module 料號主檔/總覽 查詢 | 5d | 2012-11-05 | 2012-11-12 | 49 |  | 55.77d | start no earlier than 2004-03-31 |
| 100 |  | Review & Rework & Verify on Module 料號主檔/總覽 查詢 | 3d | 2012-11-14 | 2012-11-19 | 54 |  | 55.77d | start no earlier than 2004-03-31 |
| 101 | 2.3.4.1 | **Unit Test - Module 系統登錄 + 首頁** | 8d | 2012-11-02 | 2012-11-13 |  |  | 48d |  |
| 102 |  | Unit Test of Module 系統登錄 + 首頁 | 5d | 2012-11-02 | 2012-11-08 | 57 |  | 48d | start no earlier than 2004-03-31 |
| 103 |  | Review & Verify on Module 系統登錄 + 首頁 | 2d | 2012-11-12 | 2012-11-13 | 58 |  | 48d | start no earlier than 2004-03-31 |
| 104 | 2.3.4.7 | **Unit Test - Module 系統維護** | 13d | 2012-11-29 | 2012-12-17 |  |  | 23d |  |
| 105 |  | Unit Test of Module 系統維護 | 10d | 2012-11-29 | 2012-12-12 | 61 |  | 23d | start no earlier than 2004-03-31 |
| 106 |  | Review & Verify on Module 系統維護 | 2d | 2012-12-14 | 2012-12-17 | 62 |  | 23d | finish no earlier than 2008-09-27 |
| 107 | 3.5.1.5 | **Unit Test - Module 歷史查詢** | 18d | 2012-11-22 | 2012-12-17 |  |  | 24d |  |
| 108 |  | Unit Test of Module 歷史查詢 | 15d | 2012-11-22 | 2012-12-12 | 65 |  | 24d | start no earlier than 2004-03-31 |
| 109 |  | Review & Verify on Module 歷史查詢 | 2d | 2012-12-14 | 2012-12-17 | 66 |  | 24d | start no earlier than 2004-03-31 |
| 110 | 2.3.4.3 | **Unit Test - Module 申請作業** | 19d | 2012-12-10 | 2013-01-03 |  |  | 10d |  |
| 111 |  | Unit Test of Module 申請作業 | 15d | 2012-12-10 | 2012-12-28 | 69 |  | 10d | start no earlier than 2004-03-31 |
| 112 |  | Review & Verify on Module 申請作業 | 2d | 2013-01-02 | 2013-01-03 | 70 |  | 10d | start no earlier than 2004-03-31 |
| 113 | 2.3.4.5 | **Unit Test - Module 審核作業** | 18d | 2012-12-26 | 2013-01-18 |  |  | 0d |  |
| 114 |  | Unit Test of Module 審核作業 | 15d | 2012-12-26 | 2013-01-15 | 73 |  | 0d | start no earlier than 2004-03-31 |
| 115 |  | Review & Verify on Module 審核作業 | 2d | 2013-01-17 | 2013-01-18 | 74 |  | 0d | start no earlier than 2004-03-31 |
| 116 | 3.5.1.8 | **Unit Test - Module 查詢/重訂購- 控管量** | 18d | 2012-12-11 | 2013-01-03 |  |  | 0.73d |  |
| 117 |  | Unit Test of Module查詢/重訂購- 控管量 | 15d | 2012-12-11 | 2012-12-31 | 77 |  | 0.73d | start no earlier than 2004-03-31 |
| 118 |  | Review & Verify on Module 查詢/重訂購- 控管量 | 2d | 2013-01-02 | 2013-01-03 | 78 |  | 0.73d | start no earlier than 2004-03-31 |
| 120 |  | Obtain acceptance test report | 1d | 2013-01-14 | 2013-01-15 | 82 |  | 2.67d | start no earlier than 2004-03-31 |
| 121 |  | Re-work and close post release defects | 1d | 2013-01-15 | 2013-01-16 | 120 |  | 2.67d | start no earlier than 2004-03-31 |
| 122 |  | Final delevery and Installation | 1d | 2013-01-16 | 2013-01-17 | 121 |  | 2.67d | start no earlier than 2008-10-28 |
| 123 | 2.8 | **Project Closure** | 0d | 2013-01-18 | 2013-01-18 | 93 |  | 1d |  |
| 124 |  | Assess Customer Satisfaction | 0d | 2013-01-18 | 2013-01-18 |  |  | 1d | start no earlier than 2004-03-31 |
| 125 |  | Summarize Project Results and Lessons Learned | 0d | 2013-01-18 | 2013-01-18 |  |  | 1d | start no earlier than 2004-03-31 |
| 126 |  | Review and Recognize Team Performance | 0d | 2013-01-18 | 2013-01-18 | 124 |  | 1d |  |
| 127 |  | Project Closure Meeting | 0d | 2013-01-18 | 2013-01-18 |  |  | 1d | start no earlier than 2008-10-31 |
| 128 |  | Close Out the Project Records | 0d | 2013-01-18 | 2013-01-18 |  |  | 1d | start no earlier than 2008-11-03 |

## Version 2 (saved 2012-11-16, file CSP_Schedule_Plan_V1.19293.mpp)

Last finish 2013-01-21 → 2013-03-01 (+39d). Complete tasks 4 → 14.

Added:

| ID | Task | Duration | Start | Finish | Predecessors | Resources |
| --- | --- | --- | --- | --- | --- | --- |
| 35 | 分類/屬性 設定 | 12d | 2012-11-01 | 2012-11-22 |  | SA: Richard |
| 36 | 料號新增 | 5d | 2012-11-13 A | 2012-11-28 | 35 | SA: Richard |
| 37 | 規格異動 | 8d | 2012-11-29 | 2012-12-10 | 36 | SA: Richard |
| 39 | 93階 料號 庫存異動 | 6d | 2012-12-11 | 2012-12-18 | 34 |  |
| 40 | 92階 料號 非週期需求 | 6d | 2012-12-19 | 2012-12-26 | 38 |  |
| 72 | 料號新增/規格異動 | 10d | 2012-12-11 | 2012-12-24 | 34 |  |
| 73 | 92階 料號 庫存異動 | 10d | 2012-12-25 | 2013-01-07 | 72 |  |
| 74 | 93階 料號 庫存異動 | 10d | 2012-12-25 | 2013-01-07 | 72 |  |
| 75 | 92階 料號 非週期需求 | 10d | 2012-12-25 | 2013-01-07 | 72 |  |
| 105 | 料號 主檔 | 5d | 2012-11-12 A | 2012-11-19 A | 53 | Customer: Jason [50%] |
| 106 | 料號 總覽 | 5d | 2012-11-07 | 2012-11-13 | 54 | Customer: Jason [50%] |
| 107 | 部門內控管料號 | 5d | 2012-11-14 | 2012-11-20 | 55 | Customer: Jason [50%] |
| 108 | 料號與替代料號對應總覽 | 5d | 2012-11-07 A | 2012-11-13 A | 56 | Customer: Jason [50%] |
| 139 | SAP I/F | 15d | 2013-02-08 | 2013-02-28 | 131 |  |
| 140 | Data Migration | 15d | 2013-02-08 | 2013-02-28 | 131 |  |
| 141 | Trainning | 10d | 2013-02-08 | 2013-02-21 | 131 |  |
| 142 | Go-Live | 1d | 2013-03-01 | 2013-03-01 | 140 |  |

Removed: 49 Coding & Unit Test of Module 料號主檔/總覽 查詢; 68 Coding & Unit Test - Module 申請作業; 99 Unit Test of Module 料號主檔/總覽 查詢

Changed:

| ID | Task | Start | Finish | Duration | Complete | Total float | Predecessors | Other |
| --- | --- | --- | --- | --- | --- | --- | --- | --- |
| 1 | MRO(CSP)-Consumable_Spare_Parts_Material_Control System |  |  |  |  | 4.5d → 68d |  | was named CSP-Consumable_Spare_Parts_Material_Control System |
| 2 | **Engineering Activities** | 2012-07-03 A | 2012-09-07 A |  | 0% → 100% | 126.67d → none |  |  |
| 3 | **Project Initiation** | 2012-07-03 A | 2012-09-07 A |  | 0% → 100% | 126.67d → none |  |  |
| 4 | **Define Scope** | 2012-07-03 A | 2012-07-09 A |  | 0% → 100% | 170.67d → none |  |  |
| 5 | Define project Scope | 2012-07-03 A | 2012-07-09 A |  | 0% → 100% | 101d → none |  |  |
| 6 | Develop Work Breakdown Structure | 2012-07-03 A | 2012-07-09 A |  | 0% → 100% | 101d → none |  |  |
| 7 | **Preparation** | 2012-07-03 A | 2012-09-07 A |  | 0% → 100% | 126.67d → none |  |  |
| 8 | Set Up Project Management Tools | 2012-07-03 A | 2012-07-04 A |  | 0% → 100% | 173.67d → none |  |  |
| 9 | Set Up Project develop Tools | 2012-08-27 A | 2012-09-07 A |  | 0% → 100% | 126.67d → none |  |  |
| 10 | **Project Kickoff** |  | 2013-01-21 → 2013-03-01 (+39d) | 98d? → 127d? | 4% → 22% |  |  |  |
| 13 | **MRO(CSP) New Modules** |  | 2013-01-21 → 2013-02-21 (+31d) | 97.5d? → 120.5d? | 4% → 27% | 0d → 6d |  | was named CSP New Modules |
| 14 | **Requirements, System and Acceptance Test Planning** |  | 2012-11-26 → 2013-01-03 (+38d) | 57.5d? → 85.5d? | 3% → 36% | 0.73d → 41d |  |  |
| 15 | **Requirements Engineering** |  | 2012-11-26 → 2013-01-03 (+38d) | 57.5d? → 85.5d? | 3% → 36% | 0.73d → 41d |  |  |
| 16 | **Define Requirements & prepare SRS** |  | 2012-11-26 → 2013-01-03 (+38d) | 57.5d? → 85.5d? | 3% → 36% | 0.73d → 41d |  |  |
| 17 | **基本資料 查詢(BASIC)** | 2012-09-06 A | 2012-09-10 → 2012-09-12 (+2d) | 2d? → 4d? | 0% → 50% | 21.5d → 31.27d |  | resources SA: Richard; SD2:紘杰 [50%]; SD1: KaiYue [50%]; SD3:Simon [50%]; SD4:春呈 [50%] → SA: Richard; SD2:紘杰; SD1: KaiYue; SD3:Simon; SD4:春呈 |
| 21 | **料號主檔 查詢(ITEMLIST)** | 2012-09-10 → 2012-09-12 A (+2d) | 2012-10-23 → 2012-10-31 (+8d) | 31.5d → 35.5d | 0% → 88% |  |  |  |
| 22 | 料號 主檔 | 2012-09-10 → 2012-09-12 A (+2d) | 2012-10-15 → 2012-10-24 A (+9d) | 25d → 30d | 0% → 100% | 5.5d → none |  |  |
| 23 | 料號 總覽 | 2012-10-16 A | 2012-10-18 → 2012-10-19 (+1d) | 3d → 4d | 0% → 50% | 0d → 6d |  |  |
| 24 | 部門內控管料號 | 2012-10-19 → 2012-10-22 A (+3d) | 2012-10-19 → 2012-10-25 (+6d) | 1d → 4d | 0% → 50% | 0d → 4d |  |  |
| 25 | 料號與替代料號對應總覽 | 2012-10-22 → 2012-10-26 A (+4d) | 2012-10-22 → 2012-10-30 A (+8d) | 1d → 3d | 0% → 100% | 0d → none |  |  |
| 26 | Review & Rework SRS | 2012-10-23 → 2012-10-31 (+8d) | 2012-10-23 → 2012-10-31 (+8d) |  |  |  |  |  |
| 27 | **系統登錄(LOGIN)&主頁(MP)** | 2012-10-24 → 2012-12-27 (+64d) | 2012-10-25 → 2012-12-28 (+64d) |  |  | 0d → 6d | 21 → 33 |  |
| 28 | Review & Rework SRS | 2012-10-24 → 2012-12-27 (+64d) | 2012-10-25 → 2012-12-28 (+64d) |  |  | 0d → 6d |  |  |
| 29 | **系統維護(SYS)** | 2012-10-26 → 2012-12-31 (+66d) | 2012-10-29 → 2013-01-01 (+64d) |  |  | 0d → 6d |  |  |
| 30 | Review & Rework SRS | 2012-10-26 → 2012-12-31 (+66d) | 2012-10-29 → 2013-01-01 (+64d) |  |  | 0d → 6d |  |  |
| 31 | **歷史查詢(HIS)** | 2012-10-30 → 2013-01-02 (+64d) | 2012-10-31 → 2013-01-03 (+64d) |  |  | 0d → 12d |  |  |
| 32 | Review & Rework SRS | 2012-10-30 → 2013-01-02 (+64d) | 2012-10-31 → 2013-01-03 (+64d) |  |  | 0d → 12d |  |  |
| 33 | **申請作業(APPL)** | 2012-11-01 A | 2012-11-21 → 2012-12-26 (+35d) | 15d → 40d | 0% → 2% |  | 31 → 21 |  |
| 34 | **料號新增/規格異動** | 2012-11-01 A | 2012-11-14 → 2012-12-10 (+26d) | 10d → 28d | 0% → 4% |  |  | resources none → SA: Richard |
| 38 | 92階 料號 庫存異動 | 2012-11-15 → 2012-12-11 (+26d) | 2012-11-21 → 2012-12-18 (+27d) | 5d → 6d |  |  | 34 → 37 | was named 94階 料號 庫存異動 |
| 41 | 93階 訂製品 | 2012-11-15 → 2012-12-19 (+34d) | 2012-11-21 → 2012-12-26 (+35d) | 5d → 6d |  |  | 34 → 38 | was named 94階 保養需求 |
| 43 | **審核作業(REV)** | 2012-11-22 → 2012-12-27 (+35d) | 2012-11-23 → 2013-01-02 (+40d) | 2d → 5d |  |  |  |  |
| 44 | Review & Rework SRS | 2012-11-22 → 2012-12-27 (+35d) | 2012-11-23 → 2013-01-02 (+40d) | 2d → 5d |  |  |  |  |
| 45 | **查詢/重訂購- 控管量(ROP)** | 2012-11-26 → 2013-01-02 (+37d) | 2012-11-26 → 2013-01-02 (+37d) | 1d → 0d |  | 0.73d → 42d |  |  |
| 46 | Review & Rework SRS | 2012-11-26 → 2013-01-02 (+37d) | 2012-11-26 → 2013-01-02 (+37d) | 1d → 0d |  | 0.73d → 42d |  |  |
| 47 | **Coding & Unit Test** |  | 2013-01-21 → 2013-02-21 (+31d) | 93.5d → 116.5d | 4% → 22% | 0d → 6d |  |  |
| 52 | **Coding & Unit Test - Module 料號主檔 查詢** | 2012-10-15 → 2012-10-22 A (+7d) | 2012-11-21 → 2012-11-20 (-1d) | 27d → 22d | 0% → 65% | 55.77d → 73d |  |  |
| 53 | 料號 主檔 | 2012-10-15 → 2012-10-24 A (+9d) | 2012-11-05 → 2012-11-12 A (+7d) | 15d → 13d | 0% → 100% | 55.77d → none |  |  |
| 54 | 料號 總覽 | 2012-10-19 → 2012-10-22 A (+3d) | 2012-10-25 → 2012-11-06 (+12d) | 5d → 12d | 0% → 50% | 57.27d → 78d |  |  |
| 55 | 部門內控管料號 | 2012-10-22 → 2012-10-26 A (+4d) | 2012-10-26 → 2012-11-13 (+18d) | 5d → 13d | 0% → 50% | 68.67d → 73d |  |  |
| 56 | 料號與替代料號對應總覽 | 2012-10-26 → 2012-10-31 A (+5d) | 2012-11-01 → 2012-11-06 A (+5d) |  | 0% → 100% | 57.27d → none | 54 → 25 |  |
| 57 | Code Review of Module 料號主檔/總覽 查詢 | 2012-11-12 → 2012-11-07 (-5d) | 2012-11-14 → 2012-11-08 (-6d) |  |  | 55.77d → 81d | Unit Test of Module 料號主檔/總覽 查詢 → 56 |  |
| 58 | Review & Rework & Verify on Module 料號主檔/總覽 查詢 |  | 2012-11-21 → 2012-11-20 (-1d) |  |  | 55.77d → 73d |  |  |
| 59 | **Coding & Unit - Module 系統登錄 + 首頁** | 2012-10-26 → 2012-12-31 (+66d) | 2012-11-14 → 2013-01-17 (+64d) |  |  | 48d → 31d |  |  |
| 60 | Coding & Unit Test of Module 系統登錄 + 首頁 | 2012-10-26 → 2012-12-31 (+66d) | 2012-11-01 → 2013-01-04 (+64d) |  |  | 48d → 31d |  |  |
| 61 | Code Review of Module 系統登錄 + 首頁 | 2012-11-09 → 2013-01-14 (+66d) | 2012-11-09 → 2013-01-14 (+66d) |  |  | 48d → 31d |  |  |
| 62 | Review & Rework & Verify on Module 系統登錄 + 首頁 | 2012-11-14 → 2013-01-17 (+64d) | 2012-11-14 → 2013-01-17 (+64d) |  |  | 48d → 31d |  |  |
| 63 | **Coding & Unit Test - Module 系統維護** | 2012-10-30 → 2013-01-02 (+64d) | 2012-12-19 → 2013-02-21 (+64d) |  |  | 23d → 6d |  |  |
| 64 | Coding & Unit Test of Module 系統維護 | 2012-10-30 → 2013-01-02 (+64d) | 2012-11-28 → 2013-01-31 (+64d) |  |  | 23d → 6d |  |  |
| 65 | Code Review of Module 系統維護 | 2012-12-13 → 2013-02-15 (+64d) | 2012-12-13 → 2013-02-15 (+64d) |  |  | 23d → 6d |  |  |
| 66 | Review & Rework & Verify on Module 系統維護 | 2012-12-18 → 2013-02-20 (+64d) | 2012-12-19 → 2013-02-21 (+64d) |  |  | 23d → 6d |  |  |
| 67 | **Coding & Unit Test - Module 歷史查詢** | 2012-11-01 → 2013-01-04 (+64d) | 2012-12-18 → 2013-02-13 (+57d) | 34d → 29d |  | 24d → 12d |  |  |
| 68 | Coding & Unit Test of Module 歷史查詢 | 2012-11-01 → 2013-01-04 (+64d) | 2012-11-21 → 2013-01-24 (+64d) |  |  | 24d → 12d |  |  |
| 69 | Code Review of Module 歷史查詢 | 2012-12-13 → 2013-02-08 (+57d) | 2012-12-13 → 2013-02-08 (+57d) |  |  | 24d → 12d |  |  |
| 70 | Review & Rework & Verify on Module 歷史查詢 | 2012-12-18 → 2013-02-13 (+57d) | 2012-12-18 → 2013-02-13 (+57d) |  |  | 24d → 12d |  |  |
| 71 | **Coding & Unit Test of Module 申請作業** | 2012-11-08 → 2012-12-11 (+33d) | 2012-12-07 → 2013-01-11 (+35d) | 22d → 24d |  | 10d → 25d | 42 → none | constraint start no earlier than 2004-03-31 → none |
| 76 | 93階 訂製品 | 2012-12-31 → 2012-12-25 (-6d) | 2013-01-01 → 2013-01-07 (+6d) | 2d → 10d |  | 10d → 25d | 120 → 72 | was named Code Review of Module 申請作業; resources SD1: KaiYue; SD3:Simon → none |
| 77 | Review & Rework & Verify on Module 申請作業 | 2013-01-04 → 2013-01-10 (+6d) | 2013-01-07 → 2013-01-11 (+4d) |  |  | 10d → 25d |  |  |
| 78 | **Coding & Unit Test - Module 審核作業** | 2012-11-26 → 2013-01-03 (+38d) | 2013-01-21 → 2013-02-06 (+16d) | 41d → 25d |  |  |  |  |
| 79 | Coding & Unit Test of Module 審核作業 | 2012-11-26 → 2013-01-03 (+38d) | 2012-12-25 → 2013-01-17 (+23d) | 22d → 11d |  |  |  |  |
| 80 | Code Review of Module 審核作業 | 2013-01-16 → 2013-02-01 (+16d) | 2013-01-16 → 2013-02-01 (+16d) |  |  |  |  |  |
| 81 | Review & Rework & Verify on Module 審核作業 | 2013-01-21 → 2013-02-06 (+16d) | 2013-01-21 → 2013-02-06 (+16d) |  |  | 0d → 8.73d |  |  |
| 82 | **Coding & Unit Test - Module 查詢/重訂購- 控管量** | 2012-11-27 → 2013-01-02 (+36d) | 2013-01-04 → 2013-01-02 (-2d) | 29d → 0d |  | 0.73d → 42d |  |  |
| 83 | Coding & Unit Test of Module查詢/重訂購- 控管量 | 2012-11-27 → 2013-01-02 (+36d) | 2012-12-10 → 2013-01-02 (+23d) | 10d → 0d |  | 0.73d → 42d |  |  |
| 84 | Code Review of Module 查詢/重訂購- 控管量 | 2013-01-01 → 2013-01-02 (+1d) | 2013-01-01 → 2013-01-02 (+1d) | 1d → 0d |  | 0.73d → 42d |  |  |
| 85 | Review & Rework & Verify on Module 查詢/重訂購- 控管量 | 2013-01-04 → 2013-01-02 (-2d) | 2013-01-04 → 2013-01-02 (-2d) | 1d → 0d |  | 0.73d → 42d |  |  |
| 87 | **System test** | 2013-01-07 → 2013-02-07 (+31d) | 2013-01-17 → 2013-02-15 (+29d) | 8.67d → 6.67d |  | 0.73d → 8.73d |  |  |
| 88 | **Integration Test** | 2013-01-07 → 2013-02-07 (+31d) | 2013-01-14 → 2013-02-12 (+29d) | 5.33d → 3.33d |  | 0.73d → 8.73d | 82 → 78 |  |
| 89 | Establish Integration Test Environment | 2013-01-07 → 2013-02-07 (+31d) | 2013-01-08 → 2013-02-08 (+31d) |  |  | 4.57d → 10.57d |  |  |
| 90 | Integration testing of various modules & Document Test Results | 2013-01-07 → 2013-02-07 (+31d) | 2013-01-10 → 2013-02-08 (+29d) | 4d → 2d |  | 0.73d → 8.73d |  |  |

| ID | Task | Start | Finish | Duration | Complete | Total float | Predecessors |
| --- | --- | --- | --- | --- | --- | --- | --- |
| 91 | Rework & Verification related to Integration Testing | 2013-01-11 → 2013-02-11 (+31d) | 2013-01-14 → 2013-02-12 (+29d) |  |  | 0.73d → 8.73d |  |
| 92 | **Performance Test** | 2013-01-14 → 2013-02-12 (+29d) | 2013-01-17 → 2013-02-15 (+29d) |  |  | 0.73d → 8.73d |  |
| 93 | Establish System Test Environment | 2013-01-14 → 2013-02-12 (+29d) | 2013-01-15 → 2013-02-13 (+29d) |  |  | 2.87d → 10.87d |  |
| 94 | Conduct System Testing & Document Test Results | 2013-01-14 → 2013-02-12 (+29d) | 2013-01-16 → 2013-02-14 (+29d) |  |  | 0.73d → 8.73d |  |
| 95 | Rework & Verification related to System Testing | 2013-01-16 → 2013-02-14 (+29d) | 2013-01-17 → 2013-02-15 (+29d) |  |  | 0.73d → 8.73d |  |
| 96 | **Release** | 2013-01-17 → 2013-02-15 (+29d) | 2013-01-21 → 2013-02-19 (+29d) |  |  | 0.73d → 8.73d |  |
| 97 | Preparation of Release note | 2013-01-17 → 2013-02-15 (+29d) | 2013-01-18 → 2013-02-18 (+31d) |  |  | 1.33d → 9.33d |  |
| 98 | Release program units | 2013-01-17 → 2013-02-15 (+29d) | 2013-01-21 → 2013-02-19 (+29d) |  |  | 0.73d → 8.73d |  |
| 99 | **Acceptance Test** |  | 2013-01-18 → 2013-02-19 (+32d) | 87.5d → 109.5d | 5% → 17% | 1d → 8d |  |
| 100 | **Provide onsite support to the Acceptance Testing** |  | 2013-01-18 → 2013-02-19 (+32d) | 87.5d → 109.5d | 5% → 17% | 0d → 8d |  |
| 104 | **Unit Test - Module 料號主檔 查詢** | 2012-11-05 → 2012-11-07 A (+2d) | 2012-11-19 → 2012-11-20 (+1d) |  | 0% → 43% | 55.77d → 73d |  |
| 109 | Review & Rework & Verify on Module 料號主檔/總覽 查詢 |  | 2012-11-19 → 2012-11-16 (-3d) |  |  | 55.77d → 73d | 57 → 108 |
| 110 | **Unit Test - Module 系統登錄 + 首頁** | 2012-11-02 → 2013-01-07 (+66d) | 2012-11-13 → 2013-01-16 (+64d) |  |  | 48d → 31d |  |
| 111 | Unit Test of Module 系統登錄 + 首頁 | 2012-11-02 → 2013-01-07 (+66d) | 2012-11-08 → 2013-01-11 (+64d) |  |  | 48d → 31d |  |
| 112 | Review & Verify on Module 系統登錄 + 首頁 | 2012-11-12 → 2013-01-15 (+64d) | 2012-11-13 → 2013-01-16 (+64d) |  |  | 48d → 31d |  |
| 113 | **Unit Test - Module 系統維護** | 2012-11-29 → 2013-02-01 (+64d) | 2012-12-17 → 2013-02-19 (+64d) |  |  | 23d → 6d |  |
| 114 | Unit Test of Module 系統維護 | 2012-11-29 → 2013-02-01 (+64d) | 2012-12-12 → 2013-02-14 (+64d) |  |  | 23d → 6d |  |
| 115 | Review & Verify on Module 系統維護 | 2012-12-14 → 2013-02-18 (+66d) | 2012-12-17 → 2013-02-19 (+64d) |  |  | 23d → 6d |  |
| 116 | **Unit Test - Module 歷史查詢** | 2012-11-22 → 2013-01-25 (+64d) | 2012-12-17 → 2013-02-12 (+57d) | 18d → 13d |  | 24d → 12d |  |
| 117 | Unit Test of Module 歷史查詢 | 2012-11-22 → 2013-01-25 (+64d) | 2012-12-12 → 2013-02-07 (+57d) | 15d → 10d |  | 24d → 12d |  |
| 118 | Review & Verify on Module 歷史查詢 | 2012-12-14 → 2013-02-11 (+59d) | 2012-12-17 → 2013-02-12 (+57d) |  |  | 24d → 12d |  |
| 119 | **Unit Test - Module 申請作業** | 2012-12-10 → 2013-01-08 (+29d) | 2013-01-03 → 2013-01-25 (+22d) | 19d → 14d |  | 10d → 25d |  |
| 120 | Unit Test of Module 申請作業 | 2012-12-10 → 2013-01-14 (+35d) | 2012-12-28 → 2013-01-25 (+28d) | 15d → 10d |  | 10d → 25d |  |
| 121 | Review & Verify on Module 申請作業 | 2013-01-02 → 2013-01-08 (+6d) | 2013-01-03 → 2013-01-09 (+6d) |  |  | 10d → 25d |  |
| 122 | **Unit Test - Module 審核作業** | 2012-12-26 → 2013-01-18 (+23d) | 2013-01-18 → 2013-02-05 (+18d) | 18d → 13d |  |  |  |
| 123 | Unit Test of Module 審核作業 | 2012-12-26 → 2013-01-18 (+23d) | 2013-01-15 → 2013-01-31 (+16d) | 15d → 10d |  |  |  |
| 124 | Review & Verify on Module 審核作業 | 2013-01-17 → 2013-02-04 (+18d) | 2013-01-18 → 2013-02-05 (+18d) |  |  |  |  |
| 125 | **Unit Test - Module 查詢/重訂購- 控管量** | 2012-12-11 → 2013-01-02 (+22d) | 2013-01-03 → 2013-01-02 (-1d) | 18d → 0d |  | 0.73d → 42d |  |
| 126 | Unit Test of Module查詢/重訂購- 控管量 | 2012-12-11 → 2013-01-02 (+22d) | 2012-12-31 → 2013-01-02 (+2d) | 15d → 0d |  | 0.73d → 42d |  |
| 127 | Review & Verify on Module 查詢/重訂購- 控管量 |  | 2013-01-03 → 2013-01-02 (-1d) | 2d → 0d |  | 0.73d → 42d |  |
| 129 | Obtain acceptance test report | 2013-01-14 → 2013-02-12 (+29d) | 2013-01-15 → 2013-02-12 (+28d) | 1d → 0d |  | 2.67d → 13.67d |  |
| 130 | Re-work and close post release defects | 2013-01-15 → 2013-02-06 (+22d) | 2013-01-16 → 2013-02-06 (+21d) |  |  | 2.67d → 0d | 129 → 122 |
| 131 | Final delevery and Installation | 2013-01-16 → 2013-02-07 (+22d) | 2013-01-17 → 2013-02-07 (+21d) |  |  | 2.67d → 0d |  |
| 132 | **Project Closure** | 2013-01-18 → 2013-02-19 (+32d) | 2013-01-18 → 2013-02-19 (+32d) |  |  | 1d → 8d |  |
| 133 | Assess Customer Satisfaction | 2013-01-18 → 2013-02-19 (+32d) | 2013-01-18 → 2013-02-19 (+32d) |  |  | 1d → 8d |  |
| 134 | Summarize Project Results and Lessons Learned | 2013-01-18 → 2013-02-19 (+32d) | 2013-01-18 → 2013-02-19 (+32d) |  |  | 1d → 8d |  |
| 135 | Review and Recognize Team Performance | 2013-01-18 → 2013-02-19 (+32d) | 2013-01-18 → 2013-02-19 (+32d) |  |  | 1d → 8d |  |
| 136 | Project Closure Meeting | 2013-01-18 → 2013-02-19 (+32d) | 2013-01-18 → 2013-02-19 (+32d) |  |  | 1d → 8d |  |
| 137 | Close Out the Project Records | 2013-01-18 → 2013-02-19 (+32d) | 2013-01-18 → 2013-02-19 (+32d) |  |  | 1d → 8d |  |

## Version 3 (saved 2012-11-20, file CSP_Schedule_Plan_V1.19293_1120.mpp)

Last finish 2013-03-01 → 2013-03-11 (+10d).

Added:

| ID | Task | Duration | Start | Finish | Predecessors | Constraint |
| --- | --- | --- | --- | --- | --- | --- |
| 72 | 分類/屬性 設定 | 10d | 2012-12-12 | 2012-12-25 | 34 |  |
| 74 | 規格異動 | 10d | 2012-12-26 | 2013-01-08 | 72 |  |
| 75 | 新舊料號並存處理常式(Store Procedure) | 15d | 2013-01-23 | 2013-02-19 | 74, 142 |  |
| 136 | Define the Interface Table Spec.(Item matser, Item spec.(attributes)) | 15d | 2013-01-07 | 2013-01-25 |  | start no earlier than 2013-01-07 |
| 137 | Fucn. Implementation(使用 RCP or DBLink etc., Control Flow(資料拋轉/更新時程，) | 14d | 2013-01-28 | 2013-02-21 | 136 | start no earlier than 2013-01-07 |
| 138 | Unit Test | 5d | 2013-02-22 | 2013-02-28 | 137 |  |
| 141 | Data Alignment | 15d | 2012-12-26 | 2013-01-15 | 72 |  |
| 142 | Create 舊新料號對應表 | 5d | 2013-01-16 | 2013-01-22 | 141 |  |
| 143 | 批次轉換料號 | 12d | 2013-01-23 | 2013-02-07 | 142 |  |
| 144 | Unit Test | 5d | 2013-02-20 | 2013-02-26 | 143, 75 |  |

Removed: 129 Obtain acceptance test report; 132 Project Closure; 133 Assess Customer Satisfaction; 134 Summarize Project Results and Lessons Learned; 135 Review and Recognize Team Performance; 136 Project Closure Meeting; 137 Close Out the Project Records

Changed:

| ID | Task | Start | Finish | Duration | Complete | Total float | Predecessors | Other |
| --- | --- | --- | --- | --- | --- | --- | --- | --- |
| 10 | **Project Kickoff** |  | 2013-03-01 → 2013-03-11 (+10d) | 127d? → 128d? | 22% → 18% |  |  |  |
| 13 | **MRO(CSP) New Modules** |  | 2013-02-21 → 2013-03-07 (+14d) | 120.5d? → 125.5d? | 27% → 24% | 6d → 2d |  |  |
| 14 | **Requirements, System and Acceptance Test Planning** |  | 2013-01-03 → 2013-01-04 (+1d) | 85.5d? → 86.5d? | 36% → 33% |  |  |  |
| 15 | **Requirements Engineering** |  | 2013-01-03 → 2013-01-04 (+1d) | 85.5d? → 86.5d? | 36% → 33% |  |  |  |
| 16 | **Define Requirements & prepare SRS** |  | 2013-01-03 → 2013-01-04 (+1d) | 85.5d? → 86.5d? | 36% → 33% |  |  |  |
| 27 | **系統登錄(LOGIN)&主頁(MP)** | 2012-12-27 → 2012-12-28 (+1d) | 2012-12-28 → 2012-12-31 (+3d) |  |  |  |  |  |
| 28 | Review & Rework SRS | 2012-12-27 → 2012-12-28 (+1d) | 2012-12-28 → 2012-12-31 (+3d) |  |  |  |  |  |
| 29 | **系統維護(SYS)** | 2012-12-31 → 2013-01-01 (+1d) | 2013-01-01 → 2013-01-02 (+1d) |  |  |  |  |  |
| 30 | Review & Rework SRS | 2012-12-31 → 2013-01-01 (+1d) | 2013-01-01 → 2013-01-02 (+1d) |  |  |  |  |  |
| 31 | **歷史查詢(HIS)** | 2013-01-02 → 2013-01-03 (+1d) | 2013-01-03 → 2013-01-04 (+1d) |  |  |  |  |  |
| 32 | Review & Rework SRS | 2013-01-02 → 2013-01-03 (+1d) | 2013-01-03 → 2013-01-04 (+1d) |  |  |  |  |  |
| 33 | **申請作業(APPL)** |  | 2012-12-26 → 2012-12-27 (+1d) | 40d → 41d |  | 0d → 6d |  |  |
| 34 | **料號新增/規格異動** |  | 2012-12-10 → 2012-12-11 (+1d) | 28d → 29d | 4% → 3% |  |  |  |
| 35 | 分類/屬性 設定 |  | 2012-11-22 → 2012-11-27 (+5d) | 12d → 15d |  |  |  |  |
| 36 | 料號新增 |  | 2012-11-28 → 2012-12-10 (+12d) | 5d → 10d | 20% → 10% | 0d → 1d |  |  |
| 37 | 規格異動 | 2012-11-29 → 2012-11-28 (-1d) | 2012-12-10 → 2012-12-11 (+1d) | 8d → 10d |  |  | 36 → 35 |  |
| 38 | 92階 料號 庫存異動 | 2012-12-11 → 2012-12-12 (+1d) | 2012-12-18 → 2012-12-19 (+1d) |  |  | 0d → 6d |  |  |
| 39 | 93階 料號 庫存異動 | 2012-12-11 → 2012-12-12 (+1d) | 2012-12-18 → 2012-12-19 (+1d) |  |  | 6d → 12d |  |  |
| 40 | 92階 料號 非週期需求 | 2012-12-19 → 2012-12-20 (+1d) | 2012-12-26 → 2012-12-27 (+1d) |  |  | 0d → 6d |  |  |
| 41 | 93階 訂製品 | 2012-12-19 → 2012-12-20 (+1d) | 2012-12-26 → 2012-12-27 (+1d) |  |  | 0d → 6d |  |  |
| 42 | Review & Rework SRS | 2012-11-01 → 2012-12-28 (+57d) | 2012-11-07 → 2013-01-03 (+57d) |  |  | 35d → 42d | none → 41 |  |
| 43 | **審核作業(REV)** | 2012-12-27 → 2012-12-28 (+1d) | 2013-01-02 → 2013-01-03 (+1d) |  |  | 0d → 6d |  |  |
| 44 | Review & Rework SRS | 2012-12-27 → 2012-12-28 (+1d) | 2013-01-02 → 2013-01-03 (+1d) |  |  | 0d → 6d |  |  |
| 45 | **查詢/重訂購- 控管量(ROP)** | 2013-01-02 → 2013-01-03 (+1d) | 2013-01-02 → 2013-01-03 (+1d) |  |  |  |  |  |
| 46 | Review & Rework SRS | 2013-01-02 → 2013-01-03 (+1d) | 2013-01-02 → 2013-01-03 (+1d) |  |  |  |  |  |
| 47 | **Coding & Unit Test** |  | 2013-02-21 → 2013-03-07 (+14d) | 116.5d → 121.5d | 22% → 18% | 6d → 2d |  |  |
| 59 | **Coding & Unit - Module 系統登錄 + 首頁** | 2012-12-31 → 2013-01-01 (+1d) | 2013-01-17 → 2013-01-18 (+1d) |  |  |  |  |  |
| 60 | Coding & Unit Test of Module 系統登錄 + 首頁 | 2012-12-31 → 2013-01-01 (+1d) | 2013-01-04 → 2013-01-07 (+3d) |  |  |  |  |  |
| 61 | Code Review of Module 系統登錄 + 首頁 | 2013-01-14 → 2013-01-15 (+1d) | 2013-01-14 → 2013-01-15 (+1d) |  |  |  |  |  |
| 62 | Review & Rework & Verify on Module 系統登錄 + 首頁 | 2013-01-17 → 2013-01-18 (+1d) | 2013-01-17 → 2013-01-18 (+1d) |  |  |  |  |  |
| 63 | **Coding & Unit Test - Module 系統維護** | 2013-01-02 → 2013-01-03 (+1d) | 2013-02-21 → 2013-03-01 (+8d) |  |  |  |  |  |
| 64 | Coding & Unit Test of Module 系統維護 | 2013-01-02 → 2013-01-03 (+1d) | 2013-01-31 → 2013-02-01 (+1d) |  |  |  |  |  |
| 65 | Code Review of Module 系統維護 | 2013-02-15 → 2013-02-25 (+10d) | 2013-02-15 → 2013-02-25 (+10d) |  |  |  |  |  |
| 66 | Review & Rework & Verify on Module 系統維護 | 2013-02-20 → 2013-02-28 (+8d) | 2013-02-21 → 2013-03-01 (+8d) |  |  |  |  |  |
| 67 | **Coding & Unit Test - Module 歷史查詢** | 2013-01-04 → 2013-01-07 (+3d) | 2013-02-13 → 2013-02-21 (+8d) |  |  |  |  |  |
| 68 | Coding & Unit Test of Module 歷史查詢 | 2013-01-04 → 2013-01-07 (+3d) | 2013-01-24 → 2013-01-25 (+1d) |  |  |  |  |  |
| 69 | Code Review of Module 歷史查詢 | 2013-02-08 → 2013-02-18 (+10d) | 2013-02-08 → 2013-02-18 (+10d) |  |  |  |  |  |
| 70 | Review & Rework & Verify on Module 歷史查詢 | 2013-02-13 → 2013-02-21 (+8d) | 2013-02-13 → 2013-02-21 (+8d) |  |  |  |  |  |
| 71 | **Coding & Unit Test of Module 申請作業** | 2012-12-11 → 2012-12-12 (+1d) | 2013-01-11 → 2013-02-19 (+39d) | 24d → 45d |  | 25d → 0d |  |  |
| 73 | 料號新增 | 2012-12-11 → 2012-12-26 (+15d) | 2012-12-24 → 2013-01-08 (+15d) |  |  |  | 34 → 72 | was named 料號新增/規格異動 |
| 76 | 92階 料號 庫存異動 | 2012-12-25 → 2012-12-20 (-5d) | 2013-01-07 → 2013-01-02 (-5d) |  |  |  | 73 → 38 |  |
| 77 | 93階 料號 庫存異動 | 2012-12-25 → 2012-12-20 (-5d) | 2013-01-07 → 2013-01-02 (-5d) |  |  |  | 73 → 39 |  |
| 78 | 92階 料號 非週期需求 | 2012-12-25 → 2012-12-28 (+3d) | 2013-01-07 → 2013-01-10 (+3d) |  |  | 29d → 23d | 73 → 40 |  |
| 79 | 93階 訂製品 | 2012-12-25 → 2012-12-28 (+3d) | 2013-01-07 → 2013-01-10 (+3d) |  |  | 25d → 23d | 73 → 41 |  |
| 80 | Review & Rework & Verify on Module 申請作業 | 2013-01-10 → 2013-03-06 (+55d) | 2013-01-11 → 2013-03-07 (+55d) |  |  | 25d → 0d | 124 → 123 |  |
| 81 | **Coding & Unit Test - Module 審核作業** | 2013-01-03 → 2013-01-04 (+1d) | 2013-02-06 → 2013-02-07 (+1d) |  |  | 0d → 6d |  |  |
| 82 | Coding & Unit Test of Module 審核作業 | 2013-01-03 → 2013-01-04 (+1d) | 2013-01-17 → 2013-01-18 (+1d) |  |  | 0d → 6d |  |  |
| 83 | Code Review of Module 審核作業 | 2013-02-01 → 2013-02-04 (+3d) | 2013-02-01 → 2013-02-04 (+3d) |  |  | 0d → 6d |  |  |
| 84 | Review & Rework & Verify on Module 審核作業 | 2013-02-06 → 2013-02-07 (+1d) | 2013-02-06 → 2013-02-07 (+1d) |  |  |  |  |  |
| 85 | **Coding & Unit Test - Module 查詢/重訂購- 控管量** | 2013-01-02 → 2013-01-03 (+1d) | 2013-01-02 → 2013-01-03 (+1d) |  |  |  |  |  |
| 86 | Coding & Unit Test of Module查詢/重訂購- 控管量 | 2013-01-02 → 2013-01-03 (+1d) | 2013-01-02 → 2013-01-03 (+1d) |  |  |  |  |  |
| 87 | Code Review of Module 查詢/重訂購- 控管量 | 2013-01-02 → 2013-01-03 (+1d) | 2013-01-02 → 2013-01-03 (+1d) |  |  |  |  |  |
| 88 | Review & Rework & Verify on Module 查詢/重訂購- 控管量 | 2013-01-02 → 2013-01-03 (+1d) | 2013-01-02 → 2013-01-03 (+1d) |  |  |  |  |  |
| 90 | **System test** | 2013-02-07 → 2013-02-08 (+1d) | 2013-02-15 → 2013-02-25 (+10d) |  |  |  |  |  |
| 91 | **Integration Test** | 2013-02-07 → 2013-02-08 (+1d) | 2013-02-12 → 2013-02-20 (+8d) |  |  |  |  |  |
| 92 | Establish Integration Test Environment | 2013-02-07 → 2013-02-08 (+1d) | 2013-02-08 → 2013-02-18 (+10d) |  |  |  |  |  |
| 93 | Integration testing of various modules & Document Test Results | 2013-02-07 → 2013-02-08 (+1d) | 2013-02-08 → 2013-02-18 (+10d) |  |  |  |  |  |
| 94 | Rework & Verification related to Integration Testing | 2013-02-11 → 2013-02-19 (+8d) | 2013-02-12 → 2013-02-20 (+8d) |  |  |  |  |  |
| 95 | **Performance Test** | 2013-02-12 → 2013-02-20 (+8d) | 2013-02-15 → 2013-02-25 (+10d) |  |  |  |  |  |
| 96 | Establish System Test Environment | 2013-02-12 → 2013-02-20 (+8d) | 2013-02-13 → 2013-02-21 (+8d) |  |  |  |  |  |
| 97 | Conduct System Testing & Document Test Results | 2013-02-12 → 2013-02-20 (+8d) | 2013-02-14 → 2013-02-22 (+8d) |  |  |  |  |  |
| 98 | Rework & Verification related to System Testing | 2013-02-14 → 2013-02-22 (+8d) | 2013-02-15 → 2013-02-25 (+10d) |  |  |  |  |  |
| 99 | **Release** | 2013-02-15 → 2013-02-25 (+10d) | 2013-02-19 → 2013-02-27 (+8d) |  |  |  |  |  |
| 100 | Preparation of Release note | 2013-02-15 → 2013-02-25 (+10d) | 2013-02-18 → 2013-02-26 (+8d) |  |  |  |  |  |
| 101 | Release program units | 2013-02-15 → 2013-02-25 (+10d) | 2013-02-19 → 2013-02-27 (+8d) |  |  |  |  |  |
| 102 | **Acceptance Test** |  | 2013-02-19 → 2013-03-11 (+20d) | 109.5d → 118.5d |  | 8d → 0d |  |  |
| 103 | **Provide onsite support to the Acceptance Testing** |  | 2013-02-19 → 2013-03-11 (+20d) | 109.5d → 118.5d |  | 8d → 0d |  |  |
| 113 | **Unit Test - Module 系統登錄 + 首頁** | 2013-01-07 → 2013-01-08 (+1d) | 2013-01-16 → 2013-01-17 (+1d) |  |  |  |  |  |
| 114 | Unit Test of Module 系統登錄 + 首頁 | 2013-01-07 → 2013-01-08 (+1d) | 2013-01-11 → 2013-01-14 (+3d) |  |  |  |  |  |
| 115 | Review & Verify on Module 系統登錄 + 首頁 | 2013-01-15 → 2013-01-16 (+1d) | 2013-01-16 → 2013-01-17 (+1d) |  |  |  |  |  |

| ID | Task | Start | Finish | Duration | Total float | Predecessors | Other |
| --- | --- | --- | --- | --- | --- | --- | --- |
| 116 | **Unit Test - Module 系統維護** | 2013-02-01 → 2013-02-04 (+3d) | 2013-02-19 → 2013-02-27 (+8d) |  |  |  |  |
| 117 | Unit Test of Module 系統維護 | 2013-02-01 → 2013-02-04 (+3d) | 2013-02-14 → 2013-02-22 (+8d) |  |  |  |  |
| 118 | Review & Verify on Module 系統維護 | 2013-02-18 → 2013-02-26 (+8d) | 2013-02-19 → 2013-02-27 (+8d) |  |  |  |  |
| 119 | **Unit Test - Module 歷史查詢** | 2013-01-25 → 2013-01-28 (+3d) | 2013-02-12 → 2013-02-20 (+8d) |  |  |  |  |
| 120 | Unit Test of Module 歷史查詢 | 2013-01-25 → 2013-01-28 (+3d) | 2013-02-07 → 2013-02-08 (+1d) |  |  |  |  |
| 121 | Review & Verify on Module 歷史查詢 | 2013-02-11 → 2013-02-19 (+8d) | 2013-02-12 → 2013-02-20 (+8d) |  |  |  |  |
| 122 | **Unit Test - Module 申請作業** | 2013-01-08 → 2013-02-20 (+43d) | 2013-01-25 → 2013-03-05 (+39d) | 14d → 10d | 25d → 0d |  |  |
| 123 | Unit Test of Module 申請作業 | 2013-01-14 → 2013-02-20 (+37d) | 2013-01-25 → 2013-03-05 (+39d) |  | 25d → 0d |  |  |
| 124 | Review & Verify on Module 申請作業 | 2013-01-08 → 2013-03-08 (+59d) | 2013-01-09 → 2013-03-11 (+61d) |  | 25d → 0d | 79 → 80 |  |
| 125 | **Unit Test - Module 審核作業** | 2013-01-18 → 2013-01-21 (+3d) | 2013-02-05 → 2013-02-06 (+1d) |  | 0d → 6d |  |  |
| 126 | Unit Test of Module 審核作業 | 2013-01-18 → 2013-01-21 (+3d) | 2013-01-31 → 2013-02-01 (+1d) |  | 0d → 6d |  |  |
| 127 | Review & Verify on Module 審核作業 | 2013-02-04 → 2013-02-05 (+1d) | 2013-02-05 → 2013-02-06 (+1d) |  | 0d → 6d |  |  |
| 128 | **Unit Test - Module 查詢/重訂購- 控管量** | 2013-01-02 → 2013-01-03 (+1d) | 2013-01-02 → 2013-01-03 (+1d) |  |  |  |  |
| 129 | Unit Test of Module查詢/重訂購- 控管量 | 2013-01-02 → 2013-01-03 (+1d) | 2013-01-02 → 2013-01-03 (+1d) |  |  |  |  |
| 130 | Review & Verify on Module 查詢/重訂購- 控管量 | 2013-01-02 → 2013-01-03 (+1d) | 2013-01-02 → 2013-01-03 (+1d) |  |  |  |  |
| 132 | Re-work and close post release defects | 2013-02-06 → 2013-02-07 (+1d) | 2013-02-06 → 2013-02-07 (+1d) |  | 0d → 6d |  |  |
| 133 | Final delevery and Installation | 2013-02-07 → 2013-02-08 (+1d) | 2013-02-07 → 2013-02-08 (+1d) |  | 0d → 6d |  |  |
| 135 | **SAP I/F(for 取號)** | 2013-02-08 → 2013-01-07 (-32d) |  | 15d → 34d | 1d → 6d | 133 → none | was named SAP I/F |
| 140 | **Data Migration(for 92/93 耗材)** | 2013-02-08 → 2012-12-26 (-44d) | 2013-02-28 → 2013-02-26 (-2d) | 15d → 40d |  | 133 → none | was named Data Migration |
| 145 | Trainning | 2013-02-08 → 2013-02-18 (+10d) | 2013-02-21 → 2013-03-01 (+8d) |  |  |  |  |
| 147 | Go-Live |  |  |  | 0d → 6d | 140 → 140, 133, 135 |  |
